# Proyecto parqueadero

Schedule from MS Project, 2017-10-09 to 2019-04-10, status date 2017-09-25, costs in $, A marks actual dates.

## Calendars

- Estándar: Mon-Fri 09:00-13:00, 15:00-19:00; Sat-Sun off.

## Resources

| Resource | Rate | Cost per use |
| --- | --- | --- |
| Analista1 | 11250 | 27600000 |
| Desarollador 2 | 22500 | 34500000 |
| Desarollador 1 | 22500 | 34500000 |
| Lider de proyecto | 46800 | 66000000 |
| Computador |  | 6500000 |
| Analista2 | 11250 | 27600000 |
| Impresora |  | 200000 |
| Internet | 50000 | 600000 |
| Hosting | 41600 | 498800 |

## Schedule

| ID | WBS | Task | Type | Duration | Start | Finish | Predecessors | Complete | Remaining | Actual start | Actual finish | Baseline start | Baseline finish | Baseline duration | Resources | Work | Actual work | Cost | Actual cost |
| --- | --- | --- | --- | --- | --- | --- | --- | --- | --- | --- | --- | --- | --- | --- | --- | --- | --- | --- | --- |
| 1 | 1 | **FASE I** |  | 47.88d | 2017-10-11 | 2017-12-15 |  | 100% |  | 2017-10-09 | 2017-12-11 | 2017-10-11 | 2017-12-15 | 47.88d |  | 351h | 351h | 454,311,600 | 454,311,600 |
| 2 | 1.1 | Planteamiento del problema (Analisis) | manual | 1d | 2017-10-09 A | 2017-10-09 A |  | 100% |  |  |  | 2017-10-15 | 2017-10-26 | 10d | Lider de proyecto; Computador | 8h | 8h | 72,874,400 | 72,874,400 |
| 3 | 1.2 | Componente metodologico (Formato entrevista) | manual | 4.88d | 2017-10-10 A | 2017-10-16 A | 2 | 100% |  |  |  | 2017-10-28 | 2017-10-31 | 3d | Lider de proyecto | 39h | 39h | 67,825,200 | 67,825,200 |
| 4 | 1.3 | Entrevista cliente | manual | 8d | 2017-10-17 A | 2017-10-26 A | 3 | 100% |  |  |  | 2017-11-01 | 2017-11-10 | 8d | Analista1; Computador | 64h | 64h | 34,820,000 | 34,820,000 |
| 5 | 1.4 | Establecimiento de requerimientos Funcionales y NO Funcionales | manual | 7d | 2017-10-27 A | 2017-11-06 A | 3 | 100% |  |  |  | 2017-11-12 | 2017-11-21 | 8d | Desarollador 2; Computador | 56h | 56h | 42,260,000 | 42,260,000 |
| 6 | 1.5 | Realización de la SRS - ERS | manual | 5d | 2017-11-07 A | 2017-11-13 A | 5 | 100% |  |  |  |  |  |  | Lider de proyecto | 40h | 40h | 67,872,000 | 67,872,000 |
| 7 | 1.6 | Diagramas de proceso | manual | 4d | 2017-11-14 A | 2017-11-17 A | 2 | 100% |  |  |  |  |  |  | Desarollador 1 | 32h | 32h | 35,220,000 | 35,220,000 |
| 8 | 1.7 | Mapa de proceso | manual | 7d | 2017-11-23 A | 2017-12-04 A | 5 | 100% |  |  |  | 2017-11-23 | 2017-12-04 | 7d | Desarollador 1 | 56h | 56h | 35,760,000 | 35,760,000 |
| 9 | 1.8 | Objetivos | manual | 3d | 2017-12-04 A | 2017-12-07 A | 8 | 100% |  |  |  | 2017-12-04 | 2017-12-07 | 3d | Desarollador 2 | 24h | 24h | 35,040,000 | 35,040,000 |
| 10 | 1.9 | Objetivos especificos | manual | 2d | 2017-12-08 A | 2017-12-11 A | 9 | 100% |  |  |  | 2017-12-08 | 2017-12-11 | 2d | Desarollador 1 | 16h | 16h | 34,860,000 | 34,860,000 |
| 11 | 1.10 | Inventario de Hardtware y Software | manual | 2d | 2017-12-04 A | 2017-12-06 A | 8 | 100% |  |  |  | 2017-12-04 | 2017-12-06 | 2d | Analista1 | 16h | 16h | 27,780,000 | 27,780,000 |
| 12 | 2 | **FASE II** |  | 52.88d | 2018-01-29 A | 2018-04-11 A |  | 100% |  |  |  | 2017-10-11 | 2017-10-11 | 0.88d |  | 392h | 392h | 369,729,600 | 369,729,600 |
| 13 | 2.1 | Planteamiento del problema (Diseño | manual | 15d | 2018-01-29 A | 2018-02-16 A |  | 100% |  |  |  |  |  |  | Desarollador 2 | 120h | 120h | 37,200,000 | 37,200,000 |
| 14 | 2.2 | Casos de uso diagrama | manual | 4d | 2018-02-20 A | 2018-03-08 A | 5 | 100% |  |  |  |  |  |  | Analista1 | 32h | 32h | 27,960,000 | 27,960,000 |
| 15 | 2.3 | Casos de uso plantilla | manual | 4d | 2018-02-28 A | 2018-03-08 A | 14 | 100% |  |  |  |  |  |  | Desarollador 2 | 32h | 32h | 35,220,000 | 35,220,000 |
| 16 | 2.4 | Requerimientos Funcionales y NO | manual | 5d | 2018-03-08 A | 2018-03-14 A | 5 | 100% |  |  |  |  |  |  | Desarollador 2 | 40h | 40h | 35,400,000 | 35,400,000 |
| 17 | 2.5 | Diagrama de clases | manual | 5d | 2018-03-15 A | 2018-03-23 A | 14 | 100% |  |  |  |  |  |  | Desarollador 1 | 40h | 40h | 35,400,000 | 35,400,000 |
| 18 | 2.6 | Diagrama de estado | manual | 7d | 2018-03-22 A | 2018-03-30 A | 17 | 100% |  |  |  |  |  |  | Lider de proyecto | 56h | 56h | 68,620,800 | 68,620,800 |
| 19 | 2.7 | Diagrama secuencial | manual | 5d | 2018-03-31 A | 2018-04-05 A | 18 | 100% |  |  |  |  |  |  | Desarollador 1 | 40h | 40h | 35,400,000 | 35,400,000 |
| 20 | 2.8 | Dicicionario de base de datos | manual | 2d | 2018-04-06 A | 2018-04-09 A | 16 | 100% |  |  |  |  |  |  | Lider de proyecto | 16h | 16h | 66,748,800 | 66,748,800 |
| 21 | 2.9 | Diseño del software | manual | 2d | 2018-04-10 A | 2018-04-11 A | 16 | 100% |  |  |  |  |  |  | Analista1 | 16h | 16h | 27,780,000 | 27,780,000 |
| 22 | 3 | **FASE III** |  | 54.88d | 2018-04-16 | 2018-06-29 |  | 98% | 1.37d | 2018-04-24 |  |  |  |  |  | 440h | 432h | 224,938,800 | 224,758,800 |
| 23 | 3.1 | Diseño plataforma del sistema (Mockups) | manual | 10d | 2018-04-24 A | 2018-05-07 |  | 90% | 1d |  |  |  |  |  | Desarollador 2 | 80h | 72h | 36,300,000 | 36,120,000 |
| 24 | 3.2 | Diagrama de despliegue | manual | 8d | 2018-05-08 A | 2018-05-17 A |  | 100% |  |  |  |  |  |  | Desarollador 1 | 64h | 64h | 35,940,000 | 35,940,000 |
| 25 | 3.3 | Contrucción de la base de datos | manual | 15d | 2018-05-18 A | 2018-06-07 A |  | 100% |  |  |  |  |  |  | Analista1; Analista2 | 240h | 240h | 57,900,000 | 57,900,000 |
| 26 | 3.4 | Bases de datos | manual | 5d | 2018-06-08 A | 2018-06-22 A | 25 | 100% |  |  |  |  |  |  | Analista2 | 40h | 40h | 28,050,000 | 28,050,000 |
| 27 | 3.5 | Datos insertados en la base de datos | manual | 2d | 2018-05-23 A | 2018-05-25 A | 26 | 100% |  |  |  |  |  |  | Lider de proyecto | 16h | 16h | 66,748,800 | 66,748,800 |

| ID | WBS | Task | Type | Duration | Start | Finish | Predecessors | Complete | Remaining | Actual start | Resources | Work | Actual work | Cost | Actual cost |
| --- | --- | --- | --- | --- | --- | --- | --- | --- | --- | --- | --- | --- | --- | --- | --- |
| 28 | 4 | **FASE IV** |  | 72.88d | 2018-06-18 | 2018-09-26 | 27 | 94% | 4.67d | 2018-07-25 |  | 430.4h | 396.8h | 341,629,200 | 304,512,960 |
| 29 | 4.1 | Construccion Base de datos usando sentencias DDL | manual | 25d | 2018-07-25 A | 2018-08-28 | 27 | 99% | 0d |  | Desarollador 1; Hosting | 200h | 200h | 39,540,400 | 39,000,000 |
| 30 | 4.2 | Consultas de INNER JOINS usando sentencias DML | manual | 8d | 2018-08-20 A | 2018-08-30 | 29 | 80% | 1.6d |  | Lider de proyecto | 64h | 51.2h | 68,995,200 | 68,396,160 |
| 31 | 4.3 | Sistemas de control de versiones | manual | 10d | 2018-08-28 A | 2018-09-11 | 29 | 90% | 1d |  | Desarollador 2; Hosting | 80h | 72h | 36,840,400 | 36,120,000 |
| 32 | 4.4 | Sistemas de integración continua | manual | 8d | 2018-09-11 A | 2018-09-21 | 31 | 90% | 0.8d |  | Analista2; Desarollador 1; Hosting | 70.4h | 57.6h | 63,504,400 | 28,248,000 |
| 33 | 4.5 | Diagrama de Gantt | manual | 1d | 2018-09-22 A | 2018-09-22 A | 32 | 100% |  |  | Lider de proyecto | 8h | 8h | 66,374,400 | 66,374,400 |
| 34 | 4.6 | Contratos de Software | manual | 1d | 2018-09-23 A | 2018-09-23 A | 32 | 100% |  |  | Lider de proyecto | 8h | 8h | 66,374,400 | 66,374,400 |
| 35 | 5 | **FASE V** |  | 54.88d | 2018-09-27 | 2018-12-12 |  |  |  |  |  |  |  |  |  |
| 36 | 5.1 | Documentación de las pruebas | manual | 1d? | 2018-09-27 | 2018-09-27 |  |  |  |  |  |  |  |  |  |
| 37 | 5.2 | Plan de capacitación para la implementación del nuevo sistema de información | manual | 1d? | 2018-09-27 | 2018-09-27 |  |  |  |  |  |  |  |  |  |
| 38 | 5.3 | Distribucón fisica de los equipos de hardware y software para la implementación | manual | 1d? | 2018-09-27 | 2018-09-27 |  |  |  |  |  |  |  |  |  |
| 39 | 5.4 | Diagrama de gantt | manual | 1d? | 2018-09-27 | 2018-09-27 |  |  |  |  |  |  |  |  |  |
| 40 | 5.5 | Presupuesto | manual | 1d? | 2018-09-27 | 2018-09-27 |  |  |  |  |  |  |  |  |  |
| 41 | 5.6 | Informes de uso de recurso | manual | 1d? | 2018-09-27 | 2018-09-27 |  |  |  |  |  |  |  |  |  |
| 42 | 5.7 | Informes de costos Hardware y software | manual | 1d? | 2018-09-27 | 2018-09-27 |  |  |  |  |  |  |  |  |  |
| 43 | 6 | **FASE VI** |  | 50.88d | 2019-01-30 | 2019-04-10 |  |  |  |  |  |  |  |  |  |
| 44 | 6.1 | Modelo de calidad de proyecto | manual | 1d? | 2019-01-30 | 2019-01-30 |  |  |  |  |  |  |  |  |  |
| 45 | 6.2 | Contrucción de manuales de usuario y de operación | manual | 1d? | 2019-01-30 | 2019-01-30 |  |  |  |  |  |  |  |  |  |
